# ЛР №1

Schedule from MS Project, 2024-03-01 to 2024-08-01, status date 2024-04-25, costs in ₽, A marks actual dates.
Команда разработчиков из 16 человек занимается созданием карты города на основе собственного модуля отображения. Проект должен быть завершен в течение 6 месяцев. Бюджет проекта: 50 000 рублей.

## Calendars

- Стандартный: Mon-Fri 09:00-13:00, 14:00-18:00; Sat-Sun off. Exceptions (off unless hours are given): 2024-03-08 (Международный женский день, recurring), 2024-04-28 to 2024-05-01 (Праздник Весны и Труда), 2024-05-09 to 2024-05-12 (День Победы), 2024-06-12 (День России).

## Resources

| Resource | Group | Rate | Cost per use |
| --- | --- | --- | --- |
| Ведущий программист | Программирование | 10.5 | 100 |
| Программист#1 | Программирование | 7 | 50 |
| Программист#2 | Программирование | 7 | 50 |
| Программист#3 | Программирование | 7 | 50 |
| Программист#4 | Программирование | 7 | 50 |
| Системный аналитик | Анализ | 20 | 300 |
| Художник-дизайнер | Дизайн | 8 | 70 |
| Технический писатель | Документация | 5 | 20 |
| Web-дизайнер | Internet | 7 | 50 |
| 3D аниматор | Дизайн | 8 | 70 |
| Мультимедиа-корреспондент | М-медия | 3 | 20 |
| Наборщик данных #1 | Ввод данных | 2 | 10 |
| Наборщик данных #2 | Ввод данных | 2 | 10 |
| Наборщик данных #3 | Ввод данных | 2 | 10 |
| Наборщик данных #4 | Ввод данных | 2 | 10 |
| Наборщик данных #5 | Ввод данных | 2 | 10 |
| Дополнительный сервер |  | 2 |  |
| Программист#5 | Программирование | 7.35 |  |
| Наборщик данных #6 | Ввод данных | 2 |  |
| Программист#6 | Программирование | 7.35 |  |
| Программист#7 | Программирование | 7.35 |  |

## Schedule

| ID | WBS | Task | Type | Duration | Start | Finish | Predecessors | Complete | Remaining | Baseline start | Baseline finish | Baseline duration | Total slack | Free slack | Resources | Work | Actual work | Cost | Baseline cost | Actual cost |
| --- | --- | --- | --- | --- | --- | --- | --- | --- | --- | --- | --- | --- | --- | --- | --- | --- | --- | --- | --- | --- |
| 1 | 1 | Начало проекта | milestone | 0d | 2024-03-01 09:00 A | 2024-03-01 09:00 A |  | 100% |  | 2024-03-01 09:00 | 2024-03-01 09:00 | 0d |  |  |  |  |  |  |  |  |
| 2 | 2 | **Создание интерфейса** |  | 80.53d | 2024-03-01 09:00 A | 2024-07-02 14:14 | 1 | 92% | 6.56d | 2024-03-01 09:00 | 2024-07-01 11:07 | 79.27d | 0d |  |  | 560h | 320h | 5,891.38 | 5,894 | 3,690 |
| 3 | 2.1 | **Разработка дизайна интерфейса** |  | 31d | 2024-03-01 09:00 A | 2024-04-15 18:00 A |  | 100% |  | 2024-03-01 09:00 | 2024-04-08 15:00 | 25.62d |  |  |  | 320h | 320h | 2,770 | 2,770 | 2,770 |
| 4 | 2.1.1 | Разработка 2D графических элементов |  | 3w | 2024-03-01 09:00 A | 2024-04-01 12:00 A |  | 100% |  | 2024-03-01 09:00 | 2024-03-25 12:00 | 3w |  |  | Художник-дизайнер | 120h | 120h | 1,030 | 1,030 | 1,030 |
| 5 | 2.1.2 | Разработка 3D графических элементов |  | 2w | 2024-03-01 09:00 A | 2024-03-18 11:00 A | 4SS | 100% |  | 2024-03-01 09:00 | 2024-03-18 11:00 | 2w |  |  | 3D аниматор | 80h | 80h | 710 | 710 | 710 |
| 6 | 2.1.3 | Создание заставки |  | 4.05w | 2024-03-18 11:00 A | 2024-04-15 18:00 A | 5 | 100% |  | 2024-03-18 11:00 | 2024-04-08 15:00 | 3w |  |  | 3D аниматор | 120h | 120h | 1,030 | 1,030 | 1,030 |
| 7 | 2.2 | Программирование интерфейса |  | 0.8w | 2024-06-26 12:43 | 2024-07-02 14:14 | 3, 12 |  |  | 2024-06-20 17:08 | 2024-07-01 11:07 | 1.27w | 0d |  | Программист#3; Программист#4; Ведущий программист; Программист#1; Программист#2; Программист#5; Программист#6; Программист#7 | 240h |  | 2,121.38 | 2,124 |  |
| 8 | 3 | **Построение базы объектов** |  | 78.49d | 2024-04-01 09:00 A | 2024-07-26 12:54 |  | 23% | 60.27d | 2024-03-25 12:00 | 2024-07-31 15:00 | 86.25d | 4.21d |  | Дополнительный сервер | 5507.91h | 797.04h | 15,164.31 | 15,680 | 4,017.93 |
| 9 | 3.1 | Анализ и построение структуры базы объектов |  | 2w | 2024-04-01 09:00 A | 2024-04-15 13:00 A |  | 100% |  | 2024-03-25 12:00 | 2024-04-08 15:00 | 2w |  |  | Системный аналитик | 80h | 80h | 1,900 | 1,900 | 1,900 |
| 10 | 3.2 | Программирование средств обработки базы объектов |  | 2.97w | 2024-04-15 14:00 A | 2024-05-16 12:54 | 9 | 50% | 1.5w | 2024-04-08 15:00 | 2024-05-03 15:00 | 3w | 4.21d | 0d | Программист#3; Программист#4; Программист#5; Программист#6; Программист#7 | 240h | 70h | 1,838.5 | 1,780 | 593.85 |
| 11 | 3.3 | Наполнение базы объектов |  | 10w | 2024-05-16 12:54 | 2024-07-26 12:54 | 10 |  |  | 2024-05-03 15:00 | 2024-07-31 15:00 | 12w | 4.21d |  | Наборщик данных #1; Наборщик данных #2; Наборщик данных #3; Наборщик данных #4; Наборщик данных #5; Наборщик данных #6 | 2400h |  | 4,850 | 4,850 |  |
| 12 | 4 | **Создание ядра GIS** |  | 76.46d | 2024-03-01 09:00 A | 2024-06-26 12:43 |  | 53% | 35.91d | 2024-03-01 09:00 | 2024-06-20 17:08 | 72.89d | 0d |  |  | 1880h | 694.96h | 18,443.31 | 18,399.74 | 8,950.02 |
| 13 | 4.1 | Анализ и проектирование ядра |  | 3.98w | 2024-03-01 09:00 A | 2024-04-01 12:00 A |  | 100% |  | 2024-03-01 09:00 | 2024-03-25 12:00 | 3w |  |  | Ведущий программист; Системный аналитик | 240h | 240h | 4,025 | 4,000 | 4,025 |
| 14 | 4.2 | Создание модели ядра |  | 3.4w | 2024-04-01 12:00 A | 2024-04-24 12:00 A | 13 | 100% |  | 2024-03-25 12:00 | 2024-04-17 12:00 | 3.4w |  |  | Ведущий программист; Программист#1; Программист#2 | 400h | 400h | 3,462.05 | 3,396.04 | 3,462.05 |
| 15 | 4.3 | Тестирование модели ядра |  | 0.2w | 2024-04-24 12:00 A | 2024-04-25 12:00 A | 14 | 100% |  | 2024-04-17 12:00 | 2024-04-18 12:00 | 0.2w |  |  | Программист#1; Ведущий программист; Программист#2; Программист#3; Программист#4 | 40h | 40h | 610.8 | 604 | 610.8 |
| 16 | 4.4 | Создание рабочей версии ядра |  | 6.94w | 2024-04-25 12:00 A | 2024-06-26 12:43 | 15 | 2% | 6.82w | 2024-04-18 12:00 | 2024-06-20 17:08 | 7.9w | 0d |  | Ведущий программист; Программист#1; Программист#2; Программист#3; Программист#4; Программист#5; Программист#6; Программист#7 | 1200h | 14.96h | 9,345.46 | 9,399.7 | 322.17 |
| 17 | 5 | Создание мультимедиа – наполнения |  | 6w | 2024-04-16 09:00 A | 2024-06-05 11:00 | 3 | 26% | 4.45w | 2024-04-08 15:00 | 2024-05-28 13:00 | 6w | 40.45d |  | Мультимедиа-корреспондент | 240h | 62h | 740 | 740 | 206 |
| 18 | 6 | Создание справочной системы |  | 2w | 2024-07-16 09:00 | 2024-07-31 15:46 | 7 |  |  | 2024-07-15 09:00 | 2024-07-30 10:59 | 2w | 0.98d |  | Технический писатель | 80h |  | 420 | 420 |  |
| 19 | 7 | **Создание руководства пользователя** |  | 19.64d | 2024-06-18 14:14 | 2024-07-16 10:21 | 7FS-10d |  |  | 2024-06-17 11:07 | 2024-07-11 15:07 | 18.38d | 0d |  |  | 160h |  | 1,010 | 1,010 |  |
| 20 | 7.1 | Разработка дизайна руководства |  | 1w | 2024-06-18 14:14 | 2024-06-26 09:14 |  |  |  | 2024-06-17 11:07 | 2024-06-24 14:07 | 1w | 0d |  | Художник-дизайнер | 40h |  | 390 | 390 |  |
| 21 | 7.2 | Написание руководства пользователя |  | 3w | 2024-06-20 14:14 | 2024-07-16 10:21 | 20SS+2d |  |  | 2024-06-19 11:07 | 2024-07-11 15:07 | 3w | 0d |  | Технический писатель | 120h |  | 620 | 620 |  |
| 22 | 8 | **Создание web – сайта и поддержка** |  | 27.14d | 2024-06-20 14:14 | 2024-07-29 15:19 |  |  |  | 2024-06-19 11:07 | 2024-07-24 11:07 | 25d | 0d |  |  | 248h |  | 2,106 | 2,106 |  |
| 23 | 8.1 | Разработка структуры сайта |  | 1d | 2024-06-20 14:14 | 2024-06-21 14:14 | 21SS |  |  | 2024-06-19 11:07 | 2024-06-20 11:07 | 1d | 0d |  | Web-дизайнер | 8h |  | 106 | 106 |  |
| 24 | 8.2 | Разработка дизайна сайта |  | 1.53w | 2024-06-21 14:14 | 2024-07-03 16:49 | 23 |  |  | 2024-06-20 11:07 | 2024-07-01 17:07 | 1.4w | 0d |  | 3D аниматор; Web-дизайнер; Художник-дизайнер | 120h |  | 1,110 | 1,110 |  |
| 25 | 8.3 | Наполнение сайта |  | 3w | 2024-07-03 16:49 | 2024-07-29 15:19 | 24 |  |  | 2024-07-01 17:07 | 2024-07-24 11:07 | 3w | 0d |  | Web-дизайнер | 120h |  | 890 | 890 |  |
| 26 | 9 | Тестирование сайта |  | 1.61w | 2024-07-22 15:19 | 2024-08-01 15:34 | 22FS-1w |  |  | 2024-07-17 11:07 | 2024-08-02 16:19 | 2.51w | 0d |  | Ведущий программист; Программист#1; Программист#2; Программист#3; Программист#4; Программист#5; Программист#6; Программист#7 | 480h |  | 3,945.34 | 3,939.61 |  |
| 27 | 10 | Сдача сайта в эксплуатацию | milestone | 0w | 2024-08-01 15:34 | 2024-08-01 15:34 | 26 |  |  | 2024-08-02 16:19 | 2024-08-02 16:19 | 0w | 0d |  |  |  |  |  |  |  |

| ID | WBS | Task | Type | Duration | Start | Finish | Complete | Remaining | Baseline start | Baseline finish | Baseline duration | Total slack | Constraint | Resources | Work | Actual work | Cost | Baseline cost | Actual cost |
| --- | --- | --- | --- | --- | --- | --- | --- | --- | --- | --- | --- | --- | --- | --- | --- | --- | --- | --- | --- |
| 28 | 11 | **Еженедельные совещания** |  | 98.12d | 2024-03-06 09:00 A | 2024-07-31 10:00 | 38% | 60.74d | 2024-03-06 09:00 | 2024-07-31 10:00 | 98.12d | 0d |  |  | 78h | 43h | 635 | 1,342 | 382 |
| 29 | 11.1 | Еженедельные совещания 1 | manual | 1h | 2024-03-06 09:00 A | 2024-03-06 10:00 A | 100% |  | 2024-03-06 09:00 | 2024-03-06 10:00 | 1h |  | start no earlier than 2024-03-06 09:00 | 3D аниматор; Web-дизайнер; Ведущий программист; Мультимедиа-корреспондент; Системный аналитик; Технический писатель; Художник-дизайнер | 7h | 7h | 61 | 61 | 61 |
| 30 | 11.2 | Еженедельные совещания 2 | manual | 1h | 2024-03-13 09:00 A | 2024-03-13 10:00 A | 100% |  | 2024-03-13 09:00 | 2024-03-13 10:00 | 1h |  | start no earlier than 2024-03-13 09:00 | 3D аниматор; Web-дизайнер; Ведущий программист; Мультимедиа-корреспондент; Системный аналитик; Технический писатель; Художник-дизайнер | 7h | 7h | 61 | 61 | 61 |
| 31 | 11.3 | Еженедельные совещания 3 | manual | 1h | 2024-03-20 09:00 A | 2024-03-20 10:00 A | 100% |  | 2024-03-20 09:00 | 2024-03-20 10:00 | 1h |  | start no earlier than 2024-03-20 09:00 | 3D аниматор; Web-дизайнер; Мультимедиа-корреспондент; Системный аналитик; Технический писатель | 5h | 5h | 43 | 61 | 43 |
| 32 | 11.4 | Еженедельные совещания 4 | manual | 1h | 2024-03-27 09:00 A | 2024-03-27 10:00 A | 100% |  | 2024-03-27 09:00 | 2024-03-27 10:00 | 1h |  | start no earlier than 2024-03-27 09:00 | 3D аниматор; Web-дизайнер; Ведущий программист; Мультимедиа-корреспондент; Системный аналитик; Технический писатель; Художник-дизайнер | 7h | 7h | 61 | 61 | 61 |
| 33 | 11.5 | Еженедельные совещания 5 | manual | 1h | 2024-04-03 09:00 A | 2024-04-03 10:00 A | 100% |  | 2024-04-03 09:00 | 2024-04-03 10:00 | 1h |  | start no earlier than 2024-04-03 09:00 | 3D аниматор; Web-дизайнер; Ведущий программист; Мультимедиа-корреспондент; Системный аналитик; Технический писатель; Художник-дизайнер | 7h | 7h | 61 | 61 | 61 |
| 34 | 11.6 | Еженедельные совещания 6 | manual | 1h | 2024-04-10 09:00 A | 2024-04-10 10:00 A | 100% |  | 2024-04-10 09:00 | 2024-04-10 10:00 | 1h |  | start no earlier than 2024-04-10 09:00 | 3D аниматор; Ведущий программист; Мультимедиа-корреспондент; Системный аналитик | 4h | 4h | 41 | 61 | 41 |
| 35 | 11.7 | Еженедельные совещания 7 | manual | 1h | 2024-04-17 09:00 A | 2024-04-17 10:00 A | 100% |  | 2024-04-17 09:00 | 2024-04-17 10:00 | 1h |  | start no earlier than 2024-04-17 09:00 | 3D аниматор; Ведущий программист; Мультимедиа-корреспондент; Системный аналитик | 4h | 4h | 41 | 61 | 41 |
| 36 | 11.8 | Еженедельные совещания 8 | manual | 1h | 2024-04-24 09:00 A | 2024-04-24 10:00 A | 100% |  | 2024-04-24 09:00 | 2024-04-24 10:00 | 1h |  | start no earlier than 2024-04-24 09:00 | Ведущий программист; Мультимедиа-корреспондент | 2h | 2h | 13 | 61 | 13 |
| 37 | 11.9 | Еженедельные совещания 9 | manual | 1h | 2024-05-02 09:00 | 2024-05-02 10:00 |  |  | 2024-05-02 09:00 | 2024-05-02 10:00 | 1h |  | start no earlier than 2024-05-01 09:00 | Ведущий программист; Мультимедиа-корреспондент | 2h |  | 13 | 61 |  |
| 38 | 11.10 | Еженедельные совещания 10 | manual | 1h | 2024-05-08 09:00 | 2024-05-08 10:00 |  |  | 2024-05-08 09:00 | 2024-05-08 10:00 | 1h |  | start no earlier than 2024-05-08 09:00 | Ведущий программист; Мультимедиа-корреспондент | 2h |  | 13 | 61 |  |
| 39 | 11.11 | Еженедельные совещания 11 | manual | 1h | 2024-05-15 09:00 | 2024-05-15 10:00 |  |  | 2024-05-15 09:00 | 2024-05-15 10:00 | 1h |  | start no earlier than 2024-05-15 09:00 | Ведущий программист; Мультимедиа-корреспондент | 2h |  | 13 | 61 |  |
| 40 | 11.12 | Еженедельные совещания 12 | manual | 1h | 2024-05-22 09:00 | 2024-05-22 10:00 |  |  | 2024-05-22 09:00 | 2024-05-22 10:00 | 1h |  | start no earlier than 2024-05-22 09:00 | Ведущий программист; Мультимедиа-корреспондент | 2h |  | 13 | 61 |  |
| 41 | 11.13 | Еженедельные совещания 13 | manual | 1h | 2024-05-29 09:00 | 2024-05-29 10:00 |  |  | 2024-05-29 09:00 | 2024-05-29 10:00 | 1h |  | start no earlier than 2024-05-29 09:00 | Ведущий программист; Мультимедиа-корреспондент | 2h |  | 13 | 61 |  |
| 42 | 11.14 | Еженедельные совещания 14 | manual | 1h | 2024-06-05 09:00 | 2024-06-05 10:00 |  |  | 2024-06-05 09:00 | 2024-06-05 10:00 | 1h |  | start no earlier than 2024-06-05 09:00 | Ведущий программист; Мультимедиа-корреспондент | 2h |  | 13 | 61 |  |
| 43 | 11.15 | Еженедельные совещания 15 | manual | 1h | 2024-06-13 09:00 | 2024-06-13 10:00 |  |  | 2024-06-13 09:00 | 2024-06-13 10:00 | 1h |  | start no earlier than 2024-06-12 09:00 | Ведущий программист; Мультимедиа-корреспондент | 2h |  | 13 | 61 |  |
| 44 | 11.16 | Еженедельные совещания 16 | manual | 1h | 2024-06-19 09:00 | 2024-06-19 10:00 |  |  | 2024-06-19 09:00 | 2024-06-19 10:00 | 1h |  | start no earlier than 2024-06-19 09:00 | Ведущий программист | 1h |  | 10 | 61 |  |
| 45 | 11.17 | Еженедельные совещания 18 | manual | 1h | 2024-07-03 09:00 | 2024-07-03 10:00 |  |  | 2024-07-03 09:00 | 2024-07-03 10:00 | 1h |  | start no earlier than 2024-07-03 09:00 | Художник-дизайнер | 1h |  | 8 | 61 |  |
| 46 | 11.18 | Еженедельные совещания 19 | manual | 1h | 2024-07-10 09:00 | 2024-07-10 10:00 |  |  | 2024-07-10 09:00 | 2024-07-10 10:00 | 1h |  | start no earlier than 2024-07-10 09:00 | 3D аниматор; Web-дизайнер; Ведущий программист; Технический писатель; Художник-дизайнер | 5h |  | 38 | 61 |  |
| 47 | 11.19 | Еженедельные совещания 20 | manual | 1h | 2024-07-17 09:00 | 2024-07-17 10:00 |  |  | 2024-07-17 09:00 | 2024-07-17 10:00 | 1h |  | start no earlier than 2024-07-17 09:00 | 3D аниматор; Web-дизайнер; Ведущий программист; Технический писатель; Художник-дизайнер | 5h |  | 38 | 61 |  |
| 48 | 11.20 | Еженедельные совещания 21 | manual | 1h | 2024-07-24 09:00 | 2024-07-24 10:00 |  |  | 2024-07-24 09:00 | 2024-07-24 10:00 | 1h |  | start no earlier than 2024-07-24 09:00 | 3D аниматор; Web-дизайнер; Ведущий программист; Технический писатель; Художник-дизайнер | 5h |  | 38 | 61 |  |
| 49 | 11.21 | Еженедельные совещания 22 | manual | 1h | 2024-07-31 09:00 | 2024-07-31 10:00 |  |  | 2024-07-31 09:00 | 2024-07-31 10:00 | 1h |  | start no earlier than 2024-07-31 09:00 | Web-дизайнер; Ведущий программист; Технический писатель; Художник-дизайнер | 4h |  | 30 | 61 |  |
