# РК

Schedule from MS Project, 2024-04-01 to 2024-06-25, costs in ₽.
команда из 7 чел., длительность не более 3 мес., бюджет не более 650 тыс. руб.

## Calendars

- Стандартный: Mon-Fri 09:00-13:00, 14:00-18:00; Sat-Sun off. Exceptions (off unless hours are given): 2024-04-28 to 2024-05-01 (Праздник Весны и Труда), 2024-05-09 to 2024-05-12 (День Победы), 2024-06-12 (День России).

## Resources

| Resource | Group | Unit | Rate | Cost per use | Notes |
| --- | --- | --- | --- | --- | --- |
| Соколов | Программисты |  | 437.5 |  | Ведущий программист |
| Соломин | Программисты |  | 343.75 |  |  |
| Тимофеев | Программисты |  | 312.5 |  |  |
| Яковлева | Программисты |  | 312.5 |  |  |
| Петров | Дизайнеры |  | 468.75 |  | Руководитель дизайнерской группы |
| Кузнецов | Дизайнеры |  | 312.5 |  |  |
| Фомина | Редактор сайта |  | 250 |  |  |
| Преподаватели | Преподаватели |  | 87.5 |  |  |
| ПО | ПО |  | 30000 | 5000 |  |
| Картриджи для принтера | Расходные материалы |  | 2500 |  |  |
| Бумага | Расходные материалы | пач | 200 |  |  |

## Schedule

| ID | WBS | Task | Type | Duration | Start | Finish | Predecessors | Total slack | Free slack | Resources | Work | Cost |
| --- | --- | --- | --- | --- | --- | --- | --- | --- | --- | --- | --- | --- |
| 1 | 1 | Начало проекта | milestone | 0w | 2024-04-01 | 2024-04-01 |  | 0d |  |  |  |  |
| 2 | 2 | Установка ПО |  | 15d | 2024-04-02 | 2024-04-22 | 1FS+1d | 0d |  | ПО; Соколов | 120h | 87,500 |
| 3 | 3 | Обучение персонала |  | 20d | 2024-04-16 | 2024-05-20 | 2SS+10d | 0d |  | Бумага [0.02 пач]; Картриджи для принтера; Кузнецов; Петров; Преподаватели [400%]; Соломин; Тимофеев; Фомина; Яковлева | 1600h | 378,700 |
| 4 | 4 | **Разработка представительских сайтов** |  | 8d | 2024-05-21 | 2024-05-30 | 3 | 17d | 0d |  | 160h | 51,000 |
| 5 | 4.1 | Разработка сайта 1 |  | 5d | 2024-05-21 | 2024-05-27 |  | 17d | 0d | Кузнецов; Тимофеев | 80h | 25,500 |
| 6 | 4.2 | Разработка сайта 2 |  | 5d | 2024-05-24 | 2024-05-30 | 5FS-2d | 17d |  | Кузнецов; Тимофеев | 80h | 25,500 |
| 7 | 5 | Представительские сайты созданы | milestone | 0d | 2024-05-30 | 2024-05-30 | 4 | 17d |  |  |  |  |
| 8 | 6 | **Разработка корпоративного сайта** |  | 25d | 2024-05-21 | 2024-06-25 | 3 | 0d |  |  | 424h | 148,250 |
| 9 | 6.1 | Проектирование сайта |  | 5d | 2024-05-21 | 2024-05-27 |  | 0d |  | Петров; Соколов | 80h | 36,250 |
| 10 | 6.2 | Программирование сайта |  | 15d | 2024-05-28 | 2024-06-18 | 9 | 0d |  | Соломин; Яковлева | 240h | 79,750 |
| 11 | 6.3 | Наполнение сайта |  | 3d | 2024-06-14 | 2024-06-18 | 10FS-3d | 0d |  | Фомина | 24h | 6,000 |
| 12 | 6.4 | Тестирование сайта |  | 5d | 2024-06-19 | 2024-06-25 | 11 | 0d |  | Соломин; Яковлева | 80h | 26,250 |
| 13 | 7 | Сдача сайта заказчику | milestone | 0d | 2024-06-25 | 2024-06-25 | 12 | 0d |  |  |  |  |
