# РК

Schedule from MS Project, 2024-04-01 to 2024-07-08, costs in ₽.
команда из 7 чел., длительность не более 3 мес., бюджет не более 650 тыс. руб.

## Calendars

- Стандартный: Mon-Fri 09:00-13:00, 14:00-18:00; Sat-Sun off. Exceptions (off unless hours are given): 2024-04-28 to 2024-05-01 (Праздник Весны и Труда), 2024-05-09 to 2024-05-12 (День Победы), 2024-06-12 (День России).

## Resources

| Resource | Group | Unit | Rate | Cost per use | Notes |
| --- | --- | --- | --- | --- | --- |
| Соколов | Программисты |  | 437.5 |  | Ведущий программист |
| Соломин | Программисты |  | 343.75 |  |  |
| Тимофеев | Программисты |  | 312.5 |  |  |
| Яковлева | Программисты |  | 312.5 |  |  |
| Петров | Дизайнеры |  | 468.75 |  | Руководитель дизайнерской группы |
| Кузнецов | Дизайнеры |  | 312.5 |  |  |
| Фомина | Редактор сайта |  | 250 |  |  |
| Преподаватели | Преподаватели |  | 87.5 |  |  |
| ПО | ПО |  | 30000 | 5000 |  |
| Картриджи для принтера | Расходные материалы |  | 2500 |  |  |
| Бумага | Расходные материалы | пач | 200 |  |  |

## Schedule

| ID | WBS | Task | Type | Duration | Start | Finish | Predecessors | Total slack | Free slack | Constraint | Resources | Work | Cost |
| --- | --- | --- | --- | --- | --- | --- | --- | --- | --- | --- | --- | --- | --- |
| 1 | 1 | Начало проекта | milestone | 0w | 2024-04-01 | 2024-04-01 |  | 0d |  |  |  |  |  |
| 2 | 2 | Установка ПО |  | 15d | 2024-04-02 | 2024-04-22 | 1FS+1d | 0d |  |  | ПО; Соколов | 120h | 87,500 |
| 3 | 3 | Обучение персонала |  | 28.53d | 2024-04-16 | 2024-05-31 | 2SS+10d | 0d |  | start no earlier than 2024-04-16 | Бумага [0.02 пач]; Картриджи для принтера; Кузнецов; Петров; Преподаватели [300%]; Соломин; Тимофеев; Фомина; Яковлева; Соколов | 1600h | 416,763.19 |
| 4 | 4 | **Разработка представительских сайтов** |  | 8d | 2024-05-31 | 2024-06-13 | 3 | 17d | 0d |  |  | 80h | 26,000 |
| 5 | 4.1 | **Разработка сайта 1** |  | 5d | 2024-05-31 | 2024-06-07 |  | 17d | 0d |  |  | 40h | 13,000 |
| 6 | 4.1.1 | Разработка дизайна сайта 1 |  | 2d | 2024-05-31 | 2024-06-04 |  | 17d | 0d |  | Кузнецов | 16h | 5,000 |
| 7 | 4.1.2 | Программирование сайта 1 |  | 3d | 2024-06-04 | 2024-06-07 | 6 | 17d |  |  | Тимофеев | 24h | 7,500 |
| 8 | 4.2 | **Разработка сайта 2** |  | 5d | 2024-06-05 | 2024-06-13 | 5FS-2d | 17d |  |  |  | 40h | 13,000 |
| 9 | 4.2.1 | Разработка дизайна сайта 2 |  | 2d | 2024-06-05 | 2024-06-07 |  | 17d | 0d |  | Кузнецов | 16h | 5,000 |
| 10 | 4.2.2 | Программирование сайта 2 |  | 3d | 2024-06-07 | 2024-06-13 | 9 | 17d |  |  | Тимофеев | 24h | 7,500 |
| 11 | 5 | Представительские сайты созданы | milestone | 0d | 2024-06-13 | 2024-06-13 | 4 | 17d |  |  |  |  |  |
| 12 | 6 | **Разработка корпоративного сайта** |  | 25d | 2024-05-31 | 2024-07-08 | 3 | 0d |  |  |  | 424h | 148,250 |
| 13 | 6.1 | Проектирование сайта |  | 5d | 2024-05-31 | 2024-06-07 |  | 0d |  |  | Петров; Соколов | 80h | 36,250 |
| 14 | 6.2 | Программирование сайта |  | 15d | 2024-06-07 | 2024-07-01 | 13 | 0d |  |  | Соломин; Яковлева | 240h | 79,750 |
| 15 | 6.3 | Наполнение сайта |  | 3d | 2024-06-26 | 2024-07-01 | 14FS-3d | 0d |  |  | Фомина | 24h | 6,000 |
| 16 | 6.4 | Тестирование сайта |  | 5d | 2024-07-01 | 2024-07-08 | 15 | 0d |  |  | Соломин; Яковлева | 80h | 26,250 |
| 17 | 7 | Сдача сайта заказчику | milestone | 0d | 2024-07-08 | 2024-07-08 | 16 | 0d |  |  |  |  |  |
