# РК

Schedule from MS Project, 2024-04-01 to 2024-06-19, status date 2024-05-20, costs in ₽, A marks actual dates.
команда из 7 чел., длительность не более 3 мес., бюджет не более 650 тыс. руб.

## Calendars

- Стандартный: Mon-Fri 09:00-13:00, 14:00-18:00; Sat-Sun off. Exceptions (off unless hours are given): 2024-04-28 to 2024-05-01 (Праздник Весны и Труда), 2024-05-09 to 2024-05-12 (День Победы), 2024-06-12 (День России).

## Resources

| Resource | Group | Unit | Rate | Cost per use | Notes |
| --- | --- | --- | --- | --- | --- |
| Соколов | Программисты |  | 437.5 |  | Ведущий программист |
| Соломин | Программисты |  | 343.75 |  |  |
| Тимофеев | Программисты |  | 312.5 |  |  |
| Яковлева | Программисты |  | 312.5 |  |  |
| Петров | Дизайнеры |  | 468.75 |  | Руководитель дизайнерской группы |
| Кузнецов | Дизайнеры |  | 312.5 |  |  |
| Фомина | Редактор сайта |  | 250 |  |  |
| Преподаватели | Преподаватели |  | 87.5 |  |  |
| ПО | ПО |  | 30000 | 5000 |  |
| Картриджи для принтера | Расходные материалы |  | 2500 |  |  |
| Бумага | Расходные материалы | пач | 200 |  |  |

## Schedule

| ID | WBS | Task | Type | Duration | Start | Finish | Predecessors | Complete | Remaining | Baseline start | Baseline finish | Baseline duration | Total slack | Free slack | Resources | Work | Actual work | Cost | Baseline cost | Actual cost |
| --- | --- | --- | --- | --- | --- | --- | --- | --- | --- | --- | --- | --- | --- | --- | --- | --- | --- | --- | --- | --- |
| 1 | 1 | Начало проекта | milestone | 0w | 2024-04-01 A | 2024-04-01 A |  | 100% |  | 2024-04-01 | 2024-04-01 | 0w |  |  |  |  |  |  |  |  |
| 2 | 2 | Установка ПО |  | 9d | 2024-04-02 A | 2024-04-12 A | 1FS+1d | 100% |  | 2024-04-02 | 2024-04-05 | 3.75d |  |  | ПО; Соколов; Соломин; Тимофеев; Яковлева | 120h | 120h | 77,187.5 | 77,187.5 | 77,187.5 |
| 3 | 3 | Обучение персонала |  | 22d | 2024-04-15 A | 2024-05-23 | 2 | 91% | 2d | 2024-04-05 | 2024-05-08 | 20d | 0d |  | Бумага [0.02 пач]; Картриджи для принтера; Кузнецов; Петров; Преподаватели [400%]; Соломин; Тимофеев; Фомина; Яковлева | 1600h | 1584h | 378,700 | 378,700 | 373,700 |
| 4 | 4 | **Разработка представительских сайтов** |  | 8d | 2024-05-24 | 2024-06-04 | 3 |  |  | 2024-05-08 | 2024-05-22 | 8d | 9.5d | 0d |  | 80h |  | 26,000 | 26,000 |  |
| 5 | 4.1 | **Разработка сайта 1** |  | 5d | 2024-05-24 | 2024-05-30 |  |  |  | 2024-05-08 | 2024-05-17 | 5d | 9.5d | 0d |  | 40h |  | 13,000 | 13,000 |  |
| 6 | 4.1.1 | Разработка дизайна сайта 1 |  | 2d | 2024-05-24 | 2024-05-27 |  |  |  | 2024-05-08 | 2024-05-14 | 2d | 9.5d | 0d | Кузнецов | 16h |  | 5,000 | 5,000 |  |
| 7 | 4.1.2 | Программирование сайта 1 |  | 3d | 2024-05-28 | 2024-05-30 | 6 |  |  | 2024-05-14 | 2024-05-17 | 3d | 9.5d |  | Тимофеев | 24h |  | 7,500 | 7,500 |  |
| 8 | 4.2 | **Разработка сайта 2** |  | 5d | 2024-05-29 | 2024-06-04 | 5FS-2d |  |  | 2024-05-15 | 2024-05-22 | 5d | 9.5d |  |  | 40h |  | 13,000 | 13,000 |  |
| 9 | 4.2.1 | Разработка дизайна сайта 2 |  | 2d | 2024-05-29 | 2024-05-30 |  |  |  | 2024-05-15 | 2024-05-17 | 2d | 9.5d | 0d | Кузнецов | 16h |  | 5,000 | 5,000 |  |
| 10 | 4.2.2 | Программирование сайта 2 |  | 3d | 2024-05-31 | 2024-06-04 | 9 |  |  | 2024-05-17 | 2024-05-22 | 3d | 9.5d |  | Тимофеев | 24h |  | 7,500 | 7,500 |  |
| 11 | 5 | Представительские сайты созданы | milestone | 0d | 2024-06-04 | 2024-06-04 | 4 |  |  | 2024-05-22 | 2024-05-22 | 0d | 9.5d |  |  |  |  |  |  |  |
| 12 | 6 | **Разработка корпоративного сайта** |  | 17.5d | 2024-05-24 | 2024-06-19 | 3 |  |  | 2024-05-08 | 2024-06-05 | 17.5d | 0d |  |  | 424h |  | 154,187.5 | 152,000 |  |
| 13 | 6.1 | Проектирование сайта |  | 2.5d | 2024-05-24 | 2024-05-28 |  |  |  | 2024-05-08 | 2024-05-15 | 2.5d | 0d |  | Петров; Соколов; Соломин; Яковлева | 80h |  | 31,687.5 | 31,250 |  |
| 14 | 6.2 | Программирование сайта |  | 10d | 2024-05-28 | 2024-06-11 | 13 |  |  | 2024-05-15 | 2024-05-29 | 10d | 0d |  | Соломин; Яковлева; Соколов | 240h |  | 90,250 | 88,500 |  |
| 15 | 6.3 | Наполнение сайта |  | 3d | 2024-06-06 | 2024-06-11 | 14FS-3d |  |  | 2024-05-24 | 2024-05-29 | 3d | 0d |  | Фомина | 24h |  | 6,000 | 6,000 |  |
| 16 | 6.4 | Тестирование сайта |  | 5d | 2024-06-11 | 2024-06-19 | 15 |  |  | 2024-05-29 | 2024-06-05 | 5d | 0d |  | Соломин; Яковлева | 80h |  | 26,250 | 26,250 |  |
| 17 | 7 | Сдача сайта заказчику | milestone | 0d | 2024-06-19 | 2024-06-19 | 16 |  |  | 2024-06-05 | 2024-06-05 | 0d | 0d |  |  |  |  |  |  |  |
